# EstimacionTiempoBitacoraElectronica

Schedule from MS Project, 2021-04-05 to 2021-11-04.

## Calendars

- Estándar: Mon-Fri 09:00-13:00, 15:00-19:00; Sat-Sun off.

## Resources

| Resource |
| --- |
| 6 |

## Schedule

| ID | WBS | Task | Type | Duration | Start | Finish | Predecessors | Total slack | Free slack | Constraint |
| --- | --- | --- | --- | --- | --- | --- | --- | --- | --- | --- |
| 1 | 1 | **Bitacora Electronica** |  | 154d | 2021-04-05 | 2021-11-04 |  |  |  |  |
| 2 | 1.1 | Inicio | milestone | 0d | 2021-04-05 | 2021-04-05 |  | 12d | 0d |  |
| 3 | 1.2 | **Fase 1** |  | 92d | 2021-04-05 | 2021-08-10 | 2 | 7d | 0d |  |
| 4 | 1.2.1 | **Backend** |  | 61d | 2021-04-05 | 2021-06-28 |  | 7d | 0d |  |
| 5 | 1.2.1.1 | Levantamiento de informacion |  | 3d | 2021-04-05 | 2021-04-07 | 2 | 12d | 0d |  |
| 6 | 1.2.1.2 | Análisis Código fuente |  | 1d | 2021-04-08 | 2021-04-08 | 5 | 12d | 0d |  |
| 7 | 1.2.1.3 | Análisis Base de datos |  | 1d | 2021-04-09 | 2021-04-09 | 6 | 12d | 0d |  |
| 8 | 1.2.1.4 | Diseño de la base de datos |  | 1d | 2021-04-12 | 2021-04-12 | 7 | 12d | 3d |  |
| 9 | 1.2.1.5 | Reposo medico |  | 14d | 2021-04-16 | 2021-05-05 | 8 | 9d | 4d | start no earlier than 2021-04-16 |
| 10 | 1.2.1.6 | Instalación y configuración del ambiente de desarrollo: FRONTEND BACKEND |  | 1d | 2021-05-12 | 2021-05-12 | 9 | 5d | 0d | finish no earlier than 2021-05-12 |
| 11 | 1.2.1.7 | **Creacion de servicios** |  | 30d | 2021-05-13 | 2021-06-23 | 10 | 5d | 0d |  |
| 12 | 1.2.1.7.1 | **Servicios Login** |  | 1d | 2021-05-13 | 2021-05-13 |  | 5d | 0d |  |
| 13 | 1.2.1.7.1.1 | Ingreso, Salida |  | 1d | 2021-05-13 | 2021-05-13 |  | 5d |  |  |
| 14 | 1.2.1.7.2 | **Servicios de rol** |  | 2d | 2021-05-14 | 2021-05-17 | 12 | 5d | 0d |  |
| 15 | 1.2.1.7.2.1 | Regitro de roles, Visualizar |  | 1d | 2021-05-14 | 2021-05-14 |  | 5d | 0d |  |
| 16 | 1.2.1.7.2.2 | Crear, Modificar |  | 1d | 2021-05-17 | 2021-05-17 | 15 | 5d |  |  |
| 17 | 1.2.1.7.3 | **Servicios Administrador - personas** |  | 2d | 2021-05-18 | 2021-05-19 | 12, 14 | 5d | 0d |  |
| 18 | 1.2.1.7.3.1 | Visualizar, Crear |  | 1d | 2021-05-18 | 2021-05-18 |  | 5d | 0d |  |
| 19 | 1.2.1.7.3.2 | Editar, Eliminar |  | 1d | 2021-05-19 | 2021-05-19 | 18 | 5d |  |  |
| 20 | 1.2.1.7.4 | **Servicios Administrador - usuarios** |  | 2d | 2021-05-20 | 2021-05-21 | 17 | 5d | 0d |  |
| 21 | 1.2.1.7.4.1 | Visualizar, Crear |  | 1d | 2021-05-20 | 2021-05-20 |  | 5d | 0d |  |
| 22 | 1.2.1.7.4.2 | Editar, Eliminar |  | 1d | 2021-05-21 | 2021-05-21 | 21 | 5d |  |  |
| 23 | 1.2.1.7.5 | **Servicios usuario - visitantes** |  | 4d | 2021-05-24 | 2021-05-27 | 20 | 5d | 0d |  |
| 24 | 1.2.1.7.5.1 | Buscar |  | 3d | 2021-05-24 | 2021-05-26 |  | 5d | 0d |  |
| 25 | 1.2.1.7.5.2 | Crear, Visualizar |  | 1d | 2021-05-27 | 2021-05-27 | 24 | 5d |  |  |

| ID | WBS | Task | Duration | Start | Finish | Predecessors | Total slack | Free slack |
| --- | --- | --- | --- | --- | --- | --- | --- | --- |
| 26 | 1.2.1.7.6 | **Servicios usuario - vehiculos** | 4d | 2021-05-28 | 2021-06-02 | 23 | 5d | 0d |
| 27 | 1.2.1.7.6.1 | Buscar | 3d | 2021-05-28 | 2021-06-01 |  | 5d | 0d |
| 28 | 1.2.1.7.6.2 | Crear, Visualizar | 1d | 2021-06-02 | 2021-06-02 | 27 | 5d |  |
| 29 | 1.2.1.7.7 | **Servicios usuario - Bitacora** | 4d | 2021-06-03 | 2021-06-08 | 26 | 5d | 0d |
| 30 | 1.2.1.7.7.1 | **Cotegar infromacion** | 4d | 2021-06-03 | 2021-06-08 |  | 5d |  |
| 31 | 1.2.1.7.7.1.1 | Registro de visitantes | 1d | 2021-06-03 | 2021-06-03 |  | 5d | 0d |
| 32 | 1.2.1.7.7.1.2 | Registro de vehiculos visitantes | 1d | 2021-06-04 | 2021-06-04 | 31 | 5d | 0d |
| 33 | 1.2.1.7.7.1.3 | Visualizacion del registro del visitante | 1d | 2021-06-07 | 2021-06-07 | 32 | 5d | 0d |
| 34 | 1.2.1.7.7.1.4 | Visualizacion del registro de salida del visitante | 1d | 2021-06-08 | 2021-06-08 | 33 | 5d |  |
| 35 | 1.2.1.7.8 | **Servicios de Reportes** | 11d | 2021-06-09 | 2021-06-23 | 29 | 5d |  |
| 36 | 1.2.1.7.8.1 | Implemetacion de la herramienta para diseño de PDF´S | 1d | 2021-06-09 | 2021-06-09 |  | 5d | 0d |
| 37 | 1.2.1.7.8.2 | Diseñar formato PDF | 1d | 2021-06-10 | 2021-06-10 | 36 | 5d | 0d |
| 38 | 1.2.1.7.8.3 | **General** | 3d | 2021-06-11 | 2021-06-15 | 36, 37 | 5d | 0d |
| 39 | 1.2.1.7.8.3.1 | Filtra por fechas inicio-fin | 2d | 2021-06-11 | 2021-06-14 |  | 5d | 0d |
| 40 | 1.2.1.7.8.3.2 | Visualizar busqueda | 1d | 2021-06-15 | 2021-06-15 | 39 | 5d |  |
| 41 | 1.2.1.7.8.3.3 | Generar pdf | 2d | 2021-06-11 | 2021-06-14 |  | 6d |  |
| 42 | 1.2.1.7.8.4 | **Propietario** | 3d | 2021-06-16 | 2021-06-18 | 38 | 5d | 0d |
| 43 | 1.2.1.7.8.4.1 | Filtra por propietario y fechas inicio-fin | 2d | 2021-06-16 | 2021-06-17 |  | 5d | 0d |
| 44 | 1.2.1.7.8.4.2 | Visualizar busqueda | 1d | 2021-06-18 | 2021-06-18 | 43 | 5d |  |
| 45 | 1.2.1.7.8.4.3 | Generar pdf | 1d | 2021-06-16 | 2021-06-16 |  | 7d |  |
| 46 | 1.2.1.7.8.5 | **Vehiculos** | 3d | 2021-06-21 | 2021-06-23 | 42 | 5d |  |
| 47 | 1.2.1.7.8.5.1 | Filtra por placa y fechas inicio-fin | 2d | 2021-06-21 | 2021-06-22 |  | 5d | 0d |
| 48 | 1.2.1.7.8.5.2 | Visualizar busqueda | 1d | 2021-06-23 | 2021-06-23 | 47 | 5d |  |
| 49 | 1.2.1.7.8.5.3 | Generar pdf | 1d | 2021-06-21 | 2021-06-21 |  | 7d |  |

| ID | WBS | Task | Duration | Start | Finish | Predecessors | Total slack | Free slack |
| --- | --- | --- | --- | --- | --- | --- | --- | --- |
| 50 | 1.2.1.8 | **Comprobación de los endpoints** | 5d | 2021-06-22 | 2021-06-28 | 11 |  |  |
| 51 | 1.2.1.8.1 | Pruebas Unitarias | 5d | 2021-06-22 | 2021-06-28 |  | 7d |  |
| 52 | 1.2.2 | **FrontEnd** | 31d | 2021-06-29 | 2021-08-10 | 4 | 7d |  |
| 53 | 1.2.2.1 | Diseñar y elaborar la estructura del aplicativo - pantallas | 1d | 2021-06-29 | 2021-06-29 |  | 7d | 0d |
| 54 | 1.2.2.2 | **Login** | 1d | 2021-06-30 | 2021-06-30 | 53 | 7d | 0d |
| 55 | 1.2.2.2.1 | Implementacion de la pantalla, funcionalidad del login | 1d | 2021-06-30 | 2021-06-30 |  | 7d |  |
| 56 | 1.2.2.3 | **Administracion** | 4d | 2021-07-01 | 2021-07-06 | 54 | 7d | 0d |
| 57 | 1.2.2.3.1 | Implementacion de la pantalla | 1d | 2021-07-01 | 2021-07-01 |  | 7d | 0d |
| 58 | 1.2.2.3.2 | Implementación de los servicios listar y crear | 1d | 2021-07-02 | 2021-07-02 | 57 | 7d | 0d |
| 59 | 1.2.2.3.3 | Implementación de los servicios editar y eliminar | 1d | 2021-07-05 | 2021-07-05 | 58 | 7d | 0d |
| 60 | 1.2.2.3.4 | Asignacion de perfiles | 1d | 2021-07-06 | 2021-07-06 | 59 | 7d |  |
| 61 | 1.2.2.4 | **Usuario** | 5d | 2021-07-07 | 2021-07-13 | 56 | 7d | 0d |
| 62 | 1.2.2.4.1 | Busqueda de servicios externos para consultas y consumo de informacion | 5d | 2021-07-07 | 2021-07-13 |  | 7d |  |
| 63 | 1.2.2.4.2 | **Visitas con vehiculo** | 1d | 2021-07-07 | 2021-07-07 |  | 11d |  |
| 64 | 1.2.2.4.2.1 | Implementacion de la pantalla | 1d | 2021-07-07 | 2021-07-07 |  | 11d |  |
| 65 | 1.2.2.4.2.2 | Implementación del servicio buscar visitante en la BD | 1d | 2021-07-07 | 2021-07-07 |  | 11d |  |
| 66 | 1.2.2.4.2.3 | Implementación del servicio cotehar número de C.I con el servicio externo | 1d | 2021-07-07 | 2021-07-07 |  | 11d |  |
| 67 | 1.2.2.4.2.4 | Crear registro | 1d | 2021-07-07 | 2021-07-07 |  | 11d |  |
| 68 | 1.2.2.4.2.5 | Implementación del servicio cotejar placa del vehiculo con el servicio externo | 1d | 2021-07-07 | 2021-07-07 |  | 11d |  |
| 69 | 1.2.2.4.2.6 | Crear registro | 1d | 2021-07-07 | 2021-07-07 |  | 11d |  |
| 70 | 1.2.2.4.2.7 | Registrar el registro del visitante | 1d | 2021-07-07 | 2021-07-07 |  | 11d |  |
| 71 | 1.2.2.4.3 | **Visitas peatonales** | 1d | 2021-07-07 | 2021-07-07 |  | 11d |  |
| 72 | 1.2.2.4.3.1 | Implementacion de la pantalla | 1d | 2021-07-07 | 2021-07-07 |  | 11d |  |
| 73 | 1.2.2.4.3.2 | Implementación del servicio buscar visitante en la BD | 1d | 2021-07-07 | 2021-07-07 |  | 11d |  |
| 74 | 1.2.2.4.3.3 | Crear registro | 1d | 2021-07-07 | 2021-07-07 |  | 11d |  |
| 75 | 1.2.2.4.3.4 | Registrar el ingreso del visitante | 1d | 2021-07-07 | 2021-07-07 |  | 11d |  |

| ID | WBS | Task | Duration | Start | Finish | Predecessors | Total slack | Free slack |
| --- | --- | --- | --- | --- | --- | --- | --- | --- |
| 76 | 1.2.2.5 | **Bitacora** | 3d | 2021-07-14 | 2021-07-16 | 61 | 7d | 0d |
| 77 | 1.2.2.5.1 | Implementacion de la pantalla | 1d | 2021-07-14 | 2021-07-14 |  | 9d |  |
| 78 | 1.2.2.5.2 | Visualiza registro creado | 1d | 2021-07-14 | 2021-07-14 |  | 9d |  |
| 79 | 1.2.2.5.3 | Registro de visitas | 3d | 2021-07-14 | 2021-07-16 |  | 7d |  |
| 80 | 1.2.2.5.4 | Registrar de salida | 1d | 2021-07-14 | 2021-07-14 |  | 9d |  |
| 81 | 1.2.2.6 | **Reportes** | 12d | 2021-07-19 | 2021-08-03 | 76 | 7d | 0d |
| 82 | 1.2.2.6.1 | **General** | 4d | 2021-07-19 | 2021-07-22 |  | 7d | 0d |
| 83 | 1.2.2.6.1.1 | Implemetacion y consumo del servicio de busqueda | 1d | 2021-07-19 | 2021-07-19 |  | 7d | 0d |
| 84 | 1.2.2.6.1.2 | Filtra por fechas inicio-fin | 1d | 2021-07-20 | 2021-07-20 | 83 | 7d | 0d |
| 85 | 1.2.2.6.1.3 | Visualizar busqueda | 1d | 2021-07-21 | 2021-07-21 | 84 | 7d | 0d |
| 86 | 1.2.2.6.1.4 | Generar pdf | 1d | 2021-07-22 | 2021-07-22 | 85 | 7d |  |
| 87 | 1.2.2.6.2 | **Propietario** | 4d | 2021-07-23 | 2021-07-28 | 82 | 7d | 0d |
| 88 | 1.2.2.6.2.1 | Implemetacion y consumo del servicio de busqueda | 1d | 2021-07-23 | 2021-07-23 |  | 7d | 0d |
| 89 | 1.2.2.6.2.2 | Filtra por fechas inicio-fin | 1d | 2021-07-26 | 2021-07-26 | 88 | 7d | 0d |
| 90 | 1.2.2.6.2.3 | Visualizar busqueda | 1d | 2021-07-27 | 2021-07-27 | 89 | 7d | 0d |
| 91 | 1.2.2.6.2.4 | Generar pdf | 1d | 2021-07-28 | 2021-07-28 | 90 | 7d |  |
| 92 | 1.2.2.6.3 | **Vehiculo** | 4d | 2021-07-29 | 2021-08-03 | 87 | 7d |  |
| 93 | 1.2.2.6.3.1 | Implemetacion y consumo del servicio de busqueda | 1d | 2021-07-29 | 2021-07-29 |  | 7d | 0d |
| 94 | 1.2.2.6.3.2 | Filtra por fechas inicio-fin | 1d | 2021-07-30 | 2021-07-30 | 93 | 7d | 0d |
| 95 | 1.2.2.6.3.3 | Visualizar busqueda | 1d | 2021-08-02 | 2021-08-02 | 94 | 7d | 0d |
| 96 | 1.2.2.6.3.4 | Generar pdf | 1d | 2021-08-03 | 2021-08-03 | 95 | 7d |  |
| 97 | 1.2.2.7 | Pruebas | 5d | 2021-08-04 | 2021-08-10 | 81 | 7d |  |
| 98 | 1.3 | **Fase 2** | 15d | 2021-08-11 | 2021-08-31 | 3 | 7d | 0d |
| 99 | 1.3.1 | Investigacion de uso de perifericos dentro del proyecto | 4d | 2021-08-11 | 2021-08-16 |  | 7d | 0d |
| 100 | 1.3.2 | Desarrollo de uso de perifericos: lector de barras para C.I | 4d | 2021-08-17 | 2021-08-20 | 99 | 7d | 0d |
| 101 | 1.3.3 | Implementacion de uso de perifericos: lector de barras para C.I | 3d | 2021-08-23 | 2021-08-25 | 100 | 7d | 0d |
| 102 | 1.3.4 | Pruebas de uso de perifericos: lector de barras para C.I | 3d | 2021-08-26 | 2021-08-30 | 101 | 7d | 0d |
| 103 | 1.3.5 | Despliegue de la actualizacion | 1d | 2021-08-31 | 2021-08-31 | 102 | 7d |  |

| ID | WBS | Task | Type | Duration | Start | Finish | Predecessors | Total slack | Free slack | Constraint |
| --- | --- | --- | --- | --- | --- | --- | --- | --- | --- | --- |
| 104 | 1.4 | **Fase 3** |  | 40d | 2021-09-01 | 2021-10-26 | 98 | 7d |  |  |
| 105 | 1.4.1 | Investigacion de uso de perifericos dentro del proyecto |  | 15d | 2021-09-01 | 2021-09-21 |  | 7d | 0d |  |
| 106 | 1.4.2 | Desarrollo de uso de perifericos: camara de video para placas de vehiculos |  | 10d | 2021-09-22 | 2021-10-05 | 105 | 7d | 0d |  |
| 107 | 1.4.3 | Implementacion de uso de perifericos: lector de barras para C.I |  | 5d | 2021-10-06 | 2021-10-12 | 106 | 7d | 0d |  |
| 108 | 1.4.4 | Pruebas de uso de perifericos: lector de barras para C.I |  | 5d | 2021-10-13 | 2021-10-19 | 107 | 7d | 0d |  |
| 109 | 1.4.5 | Despliegue de la actualizacion |  | 5d | 2021-10-20 | 2021-10-26 | 108 | 7d | 0d | start no earlier than 2021-06-21 |
| 110 | 1.5 | Fin | milestone | 0d | 2021-10-26 | 2021-10-26 | 109 | 7d |  |  |
